# Cronograma_MeuPetEmDia

Schedule from ProjectLibre, 2025-08-22 to 2025-11-26, 5 hours a day.

## Calendars

- Padrão: Mon-Fri 08:00-12:00, 13:00-17:00; Sat-Sun off. Exceptions (off unless hours are given): 2025-09-06 to 2025-09-07 08:00-12:00, 13:00-17:00.

## Resources

| Resource | Rate |
| --- | --- |
| Não atribuído |  |
| Luara | 20 |
| Laviny | 20 |
| Igor | 20 |
| José | 20 |
| Pedro | 20 |
| Grupo Externo | 20 |

## Schedule

| ID | WBS | Task | Duration | Start | Finish | Predecessors | Complete | Baseline start | Baseline finish | Constraint | Deadline | Resources |
| --- | --- | --- | --- | --- | --- | --- | --- | --- | --- | --- | --- | --- |
| 1 | 1 | **Meu PET em Dia** | 110.1d? | 2025-08-22 10:00 | 2025-11-26 08:30 |  | 41% | 2025-08-22 10:00 | 2025-11-26 08:30 | start no earlier than 2025-08-22 08:00 | 2025-12-25 17:00 |  |
| 2 | 1.1 | **Prospecção** | 76.8d? | 2025-08-22 10:00 | 2025-10-28 10:00 |  | 71% | 2025-08-22 10:00 | 2025-10-28 10:00 |  |  |  |
| 3 | 1.1.1 | **PTEC** | 2.43d? | 2025-08-22 10:00 | 2025-08-25 15:09 |  | 100% | 2025-08-22 10:00 | 2025-08-25 15:09 |  |  |  |
| 4 | 1.1.1.1 | Estudar Domínio de Aplicação | 0.73d? | 2025-08-22 10:00 | 2025-08-22 14:39 |  | 100% | 2025-08-22 10:00 | 2025-08-22 14:39 |  |  | Igor; José; Laviny; Luara; Pedro |
| 5 | 1.1.1.2 | Reunir-se Com Fornecedor de Requisitos | 0.2d? | 2025-08-22 14:39 | 2025-08-22 15:39 | 4 | 100% | 2025-08-22 14:39 | 2025-08-22 15:39 |  |  | Laviny; Luara |
| 6 | 1.1.1.3 | Redigir PTEC | 1d | 2025-08-22 15:39 | 2025-08-25 11:39 | 5 | 100% | 2025-08-22 15:39 | 2025-08-25 11:39 |  |  | Igor |
| 7 | 1.1.1.4 | Revisar PTEC | 0.4d? | 2025-08-25 11:39 | 2025-08-25 14:39 | 6 | 100% | 2025-08-25 11:39 | 2025-08-25 14:39 |  |  | Grupo Externo |
| 8 | 1.1.1.5 | Aprova PTEC | 0.1d? | 2025-08-25 14:39 | 2025-08-25 15:09 | 7 | 100% | 2025-08-25 14:39 | 2025-08-25 15:09 |  |  | Igor |
| 9 | 1.1.2 | **Documento de Requisitos** | 74.37d? | 2025-08-25 15:09 | 2025-10-28 10:00 |  | 65% | 2025-08-25 15:09 | 2025-10-28 10:00 |  |  |  |
| 10 | 1.1.2.1 | Reunir-se Com o Cliente | 0.4d? | 2025-08-25 15:09 | 2025-08-26 08:09 | 3 | 100% | 2025-08-25 15:09 | 2025-08-26 08:09 |  |  | Luara |
| 11 | 1.1.2.2 | Elaborar DRE | 2d | 2025-08-26 08:09 | 2025-08-27 10:09 | 10 | 100% | 2025-08-26 08:09 | 2025-08-27 10:09 |  |  | Igor; Laviny; Luara |
| 12 | 1.1.2.3 | Revisar DRE | 0.33d | 2025-09-01 12:00 | 2025-09-01 14:40 | 11 | 100% | 2025-09-01 13:00 | 2025-09-01 14:40 | start no earlier than 2025-09-01 13:00 |  | Igor; Laviny; Luara |
| 13 | 1.1.2.4 | Redigir DRE | 2d | 2025-10-26 15:40 | 2025-10-28 10:00 | 12 |  | 2025-10-26 15:40 | 2025-10-28 10:00 | start no earlier than 2025-10-26 15:40 |  | Igor; Laviny |
| 14 | 1.2 | **Análise** | 66.9d? | 2025-09-01 14:40 | 2025-10-28 13:10 |  | 58% | 2025-09-01 14:40 | 2025-10-28 13:10 |  |  |  |
| 15 | 1.2.1 | **Est. Prel. Tam.** | 1.05d? | 2025-09-01 14:40 | 2025-09-02 10:55 |  | 100% | 2025-09-01 14:40 | 2025-09-02 10:55 |  |  |  |
| 16 | 1.2.1.1 | Estimar Tamanho do Projeto | 1d | 2025-09-01 14:40 | 2025-09-02 10:40 | 12 | 100% | 2025-09-01 14:40 | 2025-09-02 10:40 |  |  | Luara |
| 17 | 1.2.1.2 | Revisar Estimativa do Tamanho do Projeto | 0.05d? | 2025-09-02 10:40 | 2025-09-02 10:55 | 16 | 100% | 2025-09-02 10:40 | 2025-09-02 10:55 |  |  | Igor; José; Laviny; Pedro |
| 18 | 1.2.2 | **Est. Prel. Cronograma e Orçamento** | 65.85d | 2025-09-02 10:55 | 2025-10-28 13:10 |  | 33% | 2025-09-02 10:55 | 2025-10-28 13:10 |  |  |  |
| 19 | 1.2.2.1 | Elaborar Cronograma e Orçamentos Preliminares | 1d | 2025-09-02 10:55 | 2025-09-02 16:55 | 15 | 100% | 2025-09-02 10:55 | 2025-09-02 16:55 |  |  | Igor |
| 20 | 1.2.2.2 | Revisar Cronograma e Orçamentos Preliminares | 1d | 2025-10-27 16:10 | 2025-10-28 13:10 | 19 |  | 2025-10-27 16:10 | 2025-10-28 13:10 | start no earlier than 2025-10-27 16:10 |  | Igor; José |
| 21 | 1.2.3 | **MRB** | 0.5d? | 2025-10-27 10:00 | 2025-10-27 13:30 |  | 100% | 2025-10-27 10:00 | 2025-10-27 13:30 |  |  |  |
| 22 | 1.2.3.1 | Elaborar MRB | 0.4d? | 2025-10-27 10:00 | 2025-10-27 13:00 | 11 | 100% | 2025-10-27 10:00 | 2025-10-27 13:00 | start no earlier than 2025-10-27 10:00 |  | Igor |
| 23 | 1.2.3.2 | Revisar MRB | 0.1d? | 2025-10-27 12:00 | 2025-10-27 13:30 | 22 | 100% | 2025-10-27 13:00 | 2025-10-27 13:30 |  |  | Laviny; Luara |
| 24 | 1.3 | **Desenvolvimento** | 23.2d | 2025-10-29 16:00 | 2025-11-19 11:00 |  | 39% | 2025-10-29 16:00 | 2025-11-19 11:00 | start no earlier than 2025-10-29 16:00 |  |  |
| 25 | 1.3.1 | **Release 01** | 4d | 2025-10-29 16:00 | 2025-11-03 11:00 |  | 100% | 2025-10-29 16:00 | 2025-11-03 11:00 |  | 2025-11-05 17:00 |  |
| 26 | 1.3.1.1 | **Implementação e teste** | 4d | 2025-10-29 16:00 | 2025-11-03 11:00 |  | 100% | 2025-10-29 16:00 | 2025-11-03 11:00 |  |  |  |
| 27 | 1.3.1.1.1 | **RFC01 (Manter Usuário)** | 4d | 2025-10-29 16:00 | 2025-11-03 11:00 |  | 100% | 2025-10-29 16:00 | 2025-11-03 11:00 |  |  |  |
| 28 | 1.3.1.1.1.1 | **Implementar RFC01** | 4d | 2025-10-29 16:00 | 2025-11-03 11:00 |  | 100% | 2025-10-29 16:00 | 2025-11-03 11:00 |  |  |  |
| 29 | 1.3.1.1.1.1.1 | Implementar RFS01 | 1d | 2025-10-29 16:00 | 2025-10-30 13:00 | 21 | 100% | 2025-10-29 16:00 | 2025-10-30 13:00 | start no earlier than 2025-09-02 10:00 |  | José |
| 30 | 1.3.1.1.1.1.2 | Implementar RFS02 | 1d | 2025-10-30 12:00 | 2025-10-31 09:00 | 29 | 100% | 2025-10-30 13:00 | 2025-10-31 09:00 |  |  | José |
| 31 | 1.3.1.1.1.1.3 | Implementar RFS03 | 1d | 2025-10-31 09:00 | 2025-10-31 15:00 | 30 | 100% | 2025-10-31 09:00 | 2025-10-31 15:00 |  |  | José |
| 32 | 1.3.1.1.1.1.4 | Implementar RFS04 | 1d | 2025-10-31 15:00 | 2025-11-03 11:00 | 31 | 100% | 2025-10-31 15:00 | 2025-11-03 11:00 |  |  | José |

| ID | WBS | Task | Duration | Start | Finish | Predecessors | Complete | Baseline start | Baseline finish | Constraint | Deadline | Resources |
| --- | --- | --- | --- | --- | --- | --- | --- | --- | --- | --- | --- | --- |
| 33 | 1.3.1.1.1.2 | **Teste RFC01** | 4d | 2025-10-29 16:00 | 2025-11-03 11:00 |  | 100% | 2025-10-29 16:00 | 2025-11-03 11:00 |  |  |  |
| 34 | 1.3.1.1.1.2.1 | Testar RFC01 | 4d | 2025-10-29 16:00 | 2025-11-03 11:00 | 28SS | 100% | 2025-10-29 16:00 | 2025-11-03 11:00 | start no earlier than 2025-09-03 14:00 |  | Luara |
| 35 | 1.3.1.1.2 | **RFC02 (Manter PETS)** | 4d | 2025-10-29 16:00 | 2025-11-03 11:00 |  | 100% | 2025-10-29 16:00 | 2025-11-03 11:00 |  |  |  |
| 36 | 1.3.1.1.2.1 | **Implementar RFC02** | 4d | 2025-10-29 16:00 | 2025-11-03 11:00 |  | 100% | 2025-10-29 16:00 | 2025-11-03 11:00 |  |  |  |
| 37 | 1.3.1.1.2.1.1 | Implementar RFS05 | 1d | 2025-10-29 16:00 | 2025-10-30 13:00 | 21 | 100% | 2025-10-29 16:00 | 2025-10-30 13:00 |  |  | Pedro |
| 38 | 1.3.1.1.2.1.2 | Implementar RFS06 | 1d | 2025-10-30 12:00 | 2025-10-31 09:00 | 37 | 100% | 2025-10-30 13:00 | 2025-10-31 09:00 |  |  | Pedro |
| 39 | 1.3.1.1.2.1.3 | Implementar RFS07 | 1d | 2025-10-31 09:00 | 2025-10-31 15:00 | 38 | 100% | 2025-10-31 09:00 | 2025-10-31 15:00 |  |  | Pedro |
| 40 | 1.3.1.1.2.1.4 | Implementar RFS08 | 1d | 2025-10-31 15:00 | 2025-11-03 11:00 | 39 | 100% | 2025-10-31 15:00 | 2025-11-03 11:00 |  |  | Pedro |
| 41 | 1.3.1.1.2.2 | **Teste RFC02** | 4d | 2025-10-29 16:00 | 2025-11-03 11:00 |  | 100% | 2025-10-29 16:00 | 2025-11-03 11:00 |  |  |  |
| 42 | 1.3.1.1.2.2.1 | Testar RFC02 | 4d | 2025-10-29 16:00 | 2025-11-03 11:00 | 36SS | 100% | 2025-10-29 16:00 | 2025-11-03 11:00 | start no earlier than 2025-09-03 14:00 |  | Laviny |
| 43 | 1.3.2 | **Release 02** | 4d | 2025-11-04 15:00 | 2025-11-07 10:00 |  |  | 2025-11-03 11:00 | 2025-11-07 10:00 | start no earlier than 2025-11-04 15:00 | 2025-11-12 17:00 |  |
| 44 | 1.3.2.1 | **Implementação e teste** | 4d | 2025-11-04 15:00 | 2025-11-07 10:00 |  |  | 2025-11-03 11:00 | 2025-11-07 10:00 |  |  |  |
| 45 | 1.3.2.1.1 | **RFC03 (Manter Agenda de Cuidados)** | 2d | 2025-11-04 15:00 | 2025-11-05 17:00 |  |  | 2025-11-03 11:00 | 2025-11-05 15:00 |  |  |  |
| 46 | 1.3.2.1.1.1 | **Implementar RFC03** | 2d | 2025-11-04 15:00 | 2025-11-05 17:00 |  |  | 2025-11-03 11:00 | 2025-11-04 14:00 |  |  |  |
| 47 | 1.3.2.1.1.1.1 | Implementar RFS09 | 0.5d | 2025-11-04 15:00 | 2025-11-05 08:30 | 25 |  | 2025-11-03 11:00 | 2025-11-03 14:30 |  |  | José |
| 48 | 1.3.2.1.1.1.2 | Implementar RFS10 | 0.5d | 2025-11-05 08:30 | 2025-11-05 11:00 | 47 |  | 2025-11-03 14:30 | 2025-11-03 17:00 |  |  | José |
| 49 | 1.3.2.1.1.1.3 | Implementar RFS11 | 0.5d | 2025-11-05 11:00 | 2025-11-05 14:30 | 48 |  | 2025-11-04 08:00 | 2025-11-04 10:30 |  |  | José |
| 50 | 1.3.2.1.1.1.4 | Implementar RFS12 | 0.5d | 2025-11-05 14:30 | 2025-11-05 17:00 | 49 |  | 2025-11-04 10:30 | 2025-11-04 14:00 |  |  | José |
| 51 | 1.3.2.1.1.2 | **Teste RFC03** | 1.6d | 2025-11-04 15:00 | 2025-11-05 15:00 |  |  | 2025-11-04 15:00 | 2025-11-05 15:00 |  |  |  |
| 52 | 1.3.2.1.1.2.1 | Testar RFC03 | 1.6d | 2025-11-04 15:00 | 2025-11-05 15:00 | 46SS |  | 2025-11-04 15:00 | 2025-11-05 15:00 | start no earlier than 2025-11-04 15:00 |  | Igor |
| 53 | 1.3.2.1.2 | **RFC04 (Manter Histórico de Saúde)** | 4d | 2025-11-04 15:00 | 2025-11-07 10:00 |  |  | 2025-11-03 11:00 | 2025-11-07 10:00 |  |  |  |
| 54 | 1.3.2.1.2.1 | **Implementar RFC04** | 4d | 2025-11-04 15:00 | 2025-11-07 10:00 |  |  | 2025-11-03 11:00 | 2025-11-05 16:00 |  |  |  |
| 55 | 1.3.2.1.2.1.1 | Implementar RFS13 | 1d | 2025-11-04 15:00 | 2025-11-05 11:00 | 25 |  | 2025-11-03 11:00 | 2025-11-03 17:00 |  |  | Pedro |
| 56 | 1.3.2.1.2.1.2 | Implementar RFS14 | 1d | 2025-11-05 11:00 | 2025-11-05 17:00 | 55 |  | 2025-11-04 08:00 | 2025-11-04 14:00 |  |  | Pedro |
| 57 | 1.3.2.1.2.1.3 | Implementar RFS15 | 1d | 2025-11-06 08:00 | 2025-11-06 14:00 | 56 |  | 2025-11-04 14:00 | 2025-11-05 10:00 |  |  | Pedro |
| 58 | 1.3.2.1.2.1.4 | Implementar RFS16 | 1d | 2025-11-06 14:00 | 2025-11-07 10:00 | 57 |  | 2025-11-05 10:00 | 2025-11-05 16:00 |  |  | Pedro |

| ID | WBS | Task | Duration | Start | Finish | Predecessors | Baseline start | Baseline finish | Constraint | Deadline | Resources |
| --- | --- | --- | --- | --- | --- | --- | --- | --- | --- | --- | --- |
| 59 | 1.3.2.1.2.2 | **Teste RFC04** | 4d | 2025-11-04 15:00 | 2025-11-07 10:00 |  | 2025-11-04 15:00 | 2025-11-07 10:00 |  |  |  |
| 60 | 1.3.2.1.2.2.1 | Testar RFC04 | 4d | 2025-11-04 15:00 | 2025-11-07 10:00 | 54SS | 2025-11-04 15:00 | 2025-11-07 10:00 | start no earlier than 2025-11-04 15:00 |  | Laviny |
| 61 | 1.3.2.1.3 | **RFC06 (Manter Controle Financeiro)** | 2d | 2025-11-06 08:00 | 2025-11-07 10:00 |  | 2025-11-04 14:00 | 2025-11-06 09:00 |  |  |  |
| 62 | 1.3.2.1.3.1 | **Implementar RFC06** | 2d | 2025-11-06 08:00 | 2025-11-07 10:00 |  | 2025-11-04 14:00 | 2025-11-05 16:00 |  |  |  |
| 63 | 1.3.2.1.3.1.1 | Implementar RFS17 | 0.5d | 2025-11-06 08:00 | 2025-11-06 10:30 | 50 | 2025-11-04 14:00 | 2025-11-04 16:30 |  |  | José |
| 64 | 1.3.2.1.3.1.2 | Implementar RFS18 | 0.5d | 2025-11-06 10:30 | 2025-11-06 14:00 | 63 | 2025-11-04 16:30 | 2025-11-05 10:00 |  |  | José |
| 65 | 1.3.2.1.3.1.3 | Implementar RFS19 | 0.5d | 2025-11-06 14:00 | 2025-11-06 16:30 | 64 | 2025-11-05 10:00 | 2025-11-05 13:30 |  |  | José |
| 66 | 1.3.2.1.3.1.4 | Implementar RFS20 | 0.5d | 2025-11-06 16:30 | 2025-11-07 10:00 | 65 | 2025-11-05 13:30 | 2025-11-05 16:00 |  |  | José |
| 67 | 1.3.2.1.3.2 | **Teste RFC06** | 2d | 2025-11-06 08:00 | 2025-11-07 10:00 |  | 2025-11-04 16:00 | 2025-11-06 09:00 |  |  |  |
| 68 | 1.3.2.1.3.2.1 | Testar RFC06 | 2d | 2025-11-06 08:00 | 2025-11-07 10:00 | 62SS | 2025-11-04 16:00 | 2025-11-06 09:00 | start no earlier than 2025-11-04 16:00 |  | Luara |
| 69 | 1.3.3 | **Release 3** | 2.4d | 2025-11-07 10:00 | 2025-11-10 15:00 |  | 2025-11-07 10:00 | 2025-11-10 15:00 |  | 2025-11-19 17:00 |  |
| 70 | 1.3.3.1 | **Implementação e teste** | 2.4d | 2025-11-07 10:00 | 2025-11-10 15:00 |  | 2025-11-07 10:00 | 2025-11-10 15:00 |  |  |  |
| 71 | 1.3.3.1.1 | **RFC07 (Relatório de Saúde)** | 2.4d | 2025-11-07 10:00 | 2025-11-10 15:00 |  | 2025-11-07 10:00 | 2025-11-10 15:00 |  |  |  |
| 72 | 1.3.3.1.1.1 | **Implementar RFC07** | 2.4d | 2025-11-07 10:00 | 2025-11-10 15:00 |  | 2025-11-07 10:00 | 2025-11-10 15:00 |  |  |  |
| 73 | 1.3.3.1.1.1.1 | Implementar Relatório de Saúde | 2.4d | 2025-11-07 10:00 | 2025-11-10 15:00 | 43 | 2025-11-07 10:00 | 2025-11-10 15:00 |  |  | Pedro |
| 74 | 1.3.3.1.1.2 | **Teste RFC07** | 2.4d | 2025-11-07 10:00 | 2025-11-10 15:00 |  | 2025-11-07 10:00 | 2025-11-10 15:00 |  |  |  |
| 75 | 1.3.3.1.1.2.1 | Testar Relatório de Saúde | 2.4d | 2025-11-07 10:00 | 2025-11-10 15:00 | 73SS | 2025-11-07 10:00 | 2025-11-10 15:00 |  |  |  |
| 76 | 1.3.4 | **Release 4** | 2.4d | 2025-11-17 16:00 | 2025-11-19 11:00 |  | 2025-11-17 16:00 | 2025-11-19 11:00 | start no earlier than 2025-11-17 16:00 | 2025-11-26 17:00 |  |
| 77 | 1.3.4.1 | **Implementação e teste** | 2.4d | 2025-11-17 16:00 | 2025-11-19 11:00 |  | 2025-11-17 16:00 | 2025-11-19 11:00 |  |  |  |
| 78 | 1.3.4.1.1 | **RFC08 (Relatório de Gastos)** | 2.4d | 2025-11-17 16:00 | 2025-11-19 11:00 |  | 2025-11-17 16:00 | 2025-11-19 11:00 |  |  |  |
| 79 | 1.3.4.1.1.1 | **Implementar RFC08** | 2.4d | 2025-11-17 16:00 | 2025-11-19 11:00 |  | 2025-11-17 16:00 | 2025-11-19 11:00 |  |  |  |
| 80 | 1.3.4.1.1.1.1 | Implementar Relatório de Gastos | 2.4d | 2025-11-17 16:00 | 2025-11-19 11:00 | 69 | 2025-11-17 16:00 | 2025-11-19 11:00 |  |  | Pedro |
| 81 | 1.3.4.1.1.2 | **Teste RFC08** | 2.4d | 2025-11-17 16:00 | 2025-11-19 11:00 |  | 2025-11-17 16:00 | 2025-11-19 11:00 |  |  |  |
| 82 | 1.3.4.1.1.2.1 | Testar Relatório de Gastos | 2.4d | 2025-11-17 16:00 | 2025-11-19 11:00 | 80SS | 2025-11-17 16:00 | 2025-11-19 11:00 |  |  | Luara |

| ID | WBS | Task | Duration | Start | Finish | Predecessors | Baseline start | Baseline finish | Resources |
| --- | --- | --- | --- | --- | --- | --- | --- | --- | --- |
| 83 | 1.4 | **Monitoramento e Controle** | 3d | 2025-11-19 11:00 | 2025-11-21 10:00 |  | 2025-11-19 11:00 | 2025-11-21 10:00 |  |
| 84 | 1.4.1 | Acompanhar Projeto | 3d | 2025-11-19 11:00 | 2025-11-21 10:00 | 24 | 2025-11-19 11:00 | 2025-11-21 10:00 | Igor |
| 85 | 1.5 | **Fechamento** | 0.5d | 2025-11-19 11:00 | 2025-11-19 14:30 |  | 2025-11-19 11:00 | 2025-11-19 14:30 |  |
| 86 | 1.5.1 | Fechamento | 0.5d | 2025-11-19 11:00 | 2025-11-19 14:30 | 24 | 2025-11-19 11:00 | 2025-11-19 14:30 | Laviny; Luara |
| 87 | 1.6 | **Controle de Mudanças** | 7d | 2025-11-19 14:30 | 2025-11-26 08:30 |  | 2025-11-19 14:30 | 2025-11-26 08:30 |  |
| 88 | 1.6.1 | Controle de Mudanças | 7d | 2025-11-19 14:30 | 2025-11-26 08:30 | 85 | 2025-11-19 14:30 | 2025-11-26 08:30 | José |
