# Cronograma_MeuPetEmDia

Schedule from ProjectLibre, 2025-08-22 to 2025-12-02, 5 hours a day.

## Calendars

- Padrão: Mon-Fri 08:00-12:00, 13:00-17:00; Sat-Sun off. Exceptions (off unless hours are given): 2025-09-06 to 2025-09-07 08:00-12:00, 13:00-17:00.

## Resources

| Resource | Rate |
| --- | --- |
| Não atribuído |  |
| Luara | 20 |
| Laviny | 20 |
| Igor | 20 |
| José | 20 |
| Pedro | 20 |
| Grupo Externo | 20 |

## Schedule

| ID | WBS | Task | Duration | Start | Finish | Predecessors | Complete | Baseline start | Baseline finish | Constraint | Deadline | Resources |
| --- | --- | --- | --- | --- | --- | --- | --- | --- | --- | --- | --- | --- |
| 1 | 1 | **Meu PET em Dia** | 117.1d? | 2025-08-22 | 2025-12-02 |  | 87% | 2025-08-22 | 2025-11-26 | start no earlier than 2025-08-22 | 2025-12-25 |  |
| 2 | 1.1 | **Prospecção** | 76.8d? | 2025-08-22 | 2025-10-28 |  | 71% | 2025-08-22 | 2025-10-28 |  |  |  |
| 3 | 1.1.1 | **PTEC** | 2.43d? | 2025-08-22 | 2025-08-25 |  | 100% | 2025-08-22 | 2025-08-25 |  |  |  |
| 4 | 1.1.1.1 | Estudar Domínio de Aplicação | 0.73d? | 2025-08-22 | 2025-08-22 |  | 100% | 2025-08-22 | 2025-08-22 |  |  | Igor; José; Laviny; Luara; Pedro |
| 5 | 1.1.1.2 | Reunir-se Com Fornecedor de Requisitos | 0.2d? | 2025-08-22 | 2025-08-22 | 4 | 100% | 2025-08-22 | 2025-08-22 |  |  | Laviny; Luara |
| 6 | 1.1.1.3 | Redigir PTEC | 1d | 2025-08-22 | 2025-08-25 | 5 | 100% | 2025-08-22 | 2025-08-25 |  |  | Igor |
| 7 | 1.1.1.4 | Revisar PTEC | 0.4d? | 2025-08-25 | 2025-08-25 | 6 | 100% | 2025-08-25 | 2025-08-25 |  |  | Grupo Externo |
| 8 | 1.1.1.5 | Aprova PTEC | 0.1d? | 2025-08-25 | 2025-08-25 | 7 | 100% | 2025-08-25 | 2025-08-25 |  |  | Igor |
| 9 | 1.1.2 | **Documento de Requisitos** | 74.37d? | 2025-08-25 | 2025-10-28 |  | 65% | 2025-08-25 | 2025-10-28 |  |  |  |
| 10 | 1.1.2.1 | Reunir-se Com o Cliente | 0.4d? | 2025-08-25 | 2025-08-26 | 3 | 100% | 2025-08-25 | 2025-08-26 |  |  | Luara |
| 11 | 1.1.2.2 | Elaborar DRE | 2d | 2025-08-26 | 2025-08-27 | 10 | 100% | 2025-08-26 | 2025-08-27 |  |  | Igor; Laviny; Luara |
| 12 | 1.1.2.3 | Revisar DRE | 0.33d | 2025-09-01 | 2025-09-01 | 11 | 100% | 2025-09-01 | 2025-09-01 | start no earlier than 2025-09-01 |  | Igor; Laviny; Luara |
| 13 | 1.1.2.4 | Redigir DRE | 2d | 2025-10-26 | 2025-10-28 | 12 |  | 2025-10-26 | 2025-10-28 | start no earlier than 2025-10-26 |  | Igor; Laviny |
| 14 | 1.2 | **Análise** | 66.9d? | 2025-09-01 | 2025-10-28 |  | 58% | 2025-09-01 | 2025-10-28 |  |  |  |
| 15 | 1.2.1 | **Est. Prel. Tam.** | 1.05d? | 2025-09-01 | 2025-09-02 |  | 100% | 2025-09-01 | 2025-09-02 |  |  |  |
| 16 | 1.2.1.1 | Estimar Tamanho do Projeto | 1d | 2025-09-01 | 2025-09-02 | 12 | 100% | 2025-09-01 | 2025-09-02 |  |  | Luara |
| 17 | 1.2.1.2 | Revisar Estimativa do Tamanho do Projeto | 0.05d? | 2025-09-02 | 2025-09-02 | 16 | 100% | 2025-09-02 | 2025-09-02 |  |  | Igor; José; Laviny; Pedro |
| 18 | 1.2.2 | **Est. Prel. Cronograma e Orçamento** | 65.85d | 2025-09-02 | 2025-10-28 |  | 33% | 2025-09-02 | 2025-10-28 |  |  |  |
| 19 | 1.2.2.1 | Elaborar Cronograma e Orçamentos Preliminares | 1d | 2025-09-02 | 2025-09-02 | 15 | 100% | 2025-09-02 | 2025-09-02 |  |  | Igor |
| 20 | 1.2.2.2 | Revisar Cronograma e Orçamentos Preliminares | 1d | 2025-10-27 | 2025-10-28 | 19 |  | 2025-10-27 | 2025-10-28 | start no earlier than 2025-10-27 |  | Igor; José |
| 21 | 1.2.3 | **MRB** | 0.5d? | 2025-10-27 | 2025-10-27 |  | 100% | 2025-10-27 | 2025-10-27 |  |  |  |
| 22 | 1.2.3.1 | Elaborar MRB | 0.4d? | 2025-10-27 | 2025-10-27 | 11 | 100% | 2025-10-27 | 2025-10-27 | start no earlier than 2025-10-27 |  | Igor |
| 23 | 1.2.3.2 | Revisar MRB | 0.1d? | 2025-10-27 | 2025-10-27 | 22 | 100% | 2025-10-27 | 2025-10-27 |  |  | Laviny; Luara |
| 24 | 1.3 | **Desenvolvimento** | 29.6d? | 2025-10-29 | 2025-11-25 |  | 100% | 2025-10-29 | 2025-11-19 | start no earlier than 2025-10-29 |  |  |
| 25 | 1.3.1 | **Release 01** | 4d | 2025-10-29 | 2025-11-03 |  | 100% | 2025-10-29 | 2025-11-03 |  | 2025-11-05 |  |
| 26 | 1.3.1.1 | **Implementação e teste** | 4d | 2025-10-29 | 2025-11-03 |  | 100% | 2025-10-29 | 2025-11-03 |  |  |  |
| 27 | 1.3.1.1.1 | **RFC01 (Manter Usuário)** | 4d | 2025-10-29 | 2025-11-03 |  | 100% | 2025-10-29 | 2025-11-03 |  |  |  |
| 28 | 1.3.1.1.1.1 | **Implementar RFC01** | 4d | 2025-10-29 | 2025-11-03 |  | 100% | 2025-10-29 | 2025-11-03 |  |  |  |
| 29 | 1.3.1.1.1.1.1 | Implementar RFS01 | 1d | 2025-10-29 | 2025-10-30 | 21 | 100% | 2025-10-29 | 2025-10-30 | start no earlier than 2025-09-02 |  | José |
| 30 | 1.3.1.1.1.1.2 | Implementar RFS02 | 1d | 2025-10-30 | 2025-10-31 | 29 | 100% | 2025-10-30 | 2025-10-31 |  |  | José |
| 31 | 1.3.1.1.1.1.3 | Implementar RFS03 | 1d | 2025-10-31 | 2025-10-31 | 30 | 100% | 2025-10-31 | 2025-10-31 |  |  | José |
| 32 | 1.3.1.1.1.1.4 | Implementar RFS04 | 1d | 2025-10-31 | 2025-11-03 | 31 | 100% | 2025-10-31 | 2025-11-03 |  |  | José |

| ID | WBS | Task | Duration | Start | Finish | Predecessors | Complete | Baseline start | Baseline finish | Constraint | Deadline | Resources |
| --- | --- | --- | --- | --- | --- | --- | --- | --- | --- | --- | --- | --- |
| 33 | 1.3.1.1.1.2 | **Teste RFC01** | 4d | 2025-10-29 | 2025-11-03 |  | 100% | 2025-10-29 | 2025-11-03 |  |  |  |
| 34 | 1.3.1.1.1.2.1 | Testar RFC01 | 4d | 2025-10-29 | 2025-11-03 | 28SS | 100% | 2025-10-29 | 2025-11-03 | start no earlier than 2025-09-03 |  | Luara |
| 35 | 1.3.1.1.2 | **RFC02 (Manter PETS)** | 4d | 2025-10-29 | 2025-11-03 |  | 100% | 2025-10-29 | 2025-11-03 |  |  |  |
| 36 | 1.3.1.1.2.1 | **Implementar RFC02** | 4d | 2025-10-29 | 2025-11-03 |  | 100% | 2025-10-29 | 2025-11-03 |  |  |  |
| 37 | 1.3.1.1.2.1.1 | Implementar RFS05 | 1d | 2025-10-29 | 2025-10-30 | 21 | 100% | 2025-10-29 | 2025-10-30 |  |  | Pedro |
| 38 | 1.3.1.1.2.1.2 | Implementar RFS06 | 1d | 2025-10-30 | 2025-10-31 | 37 | 100% | 2025-10-30 | 2025-10-31 |  |  | Pedro |
| 39 | 1.3.1.1.2.1.3 | Implementar RFS07 | 1d | 2025-10-31 | 2025-10-31 | 38 | 100% | 2025-10-31 | 2025-10-31 |  |  | Pedro |
| 40 | 1.3.1.1.2.1.4 | Implementar RFS08 | 1d | 2025-10-31 | 2025-11-03 | 39 | 100% | 2025-10-31 | 2025-11-03 |  |  | Pedro |
| 41 | 1.3.1.1.2.2 | **Teste RFC02** | 4d | 2025-10-29 | 2025-11-03 |  | 100% | 2025-10-29 | 2025-11-03 |  |  |  |
| 42 | 1.3.1.1.2.2.1 | Testar RFC02 | 4d | 2025-10-29 | 2025-11-03 | 36SS | 100% | 2025-10-29 | 2025-11-03 | start no earlier than 2025-09-03 |  | Laviny |
| 43 | 1.3.2 | **Release 02** | 6.8d | 2025-11-05 | 2025-11-11 |  | 100% | 2025-11-03 | 2025-11-07 | start no earlier than 2025-11-04 | 2025-11-12 |  |
| 44 | 1.3.2.1 | **Implementação e teste** | 6.8d | 2025-11-05 | 2025-11-11 |  | 100% | 2025-11-03 | 2025-11-07 |  |  |  |
| 45 | 1.3.2.1.1 | **RFC03 (Manter Agenda de Cuidados)** | 6.8d | 2025-11-05 | 2025-11-11 |  | 100% | 2025-11-03 | 2025-11-05 |  |  |  |
| 46 | 1.3.2.1.1.1 | **Implementar RFC03** | 4.6d | 2025-11-05 | 2025-11-10 |  | 100% | 2025-11-03 | 2025-11-04 |  |  |  |
| 47 | 1.3.2.1.1.1.1 | Implementar RFS09 | 1d | 2025-11-05 | 2025-11-06 | 25 | 100% | 2025-11-03 | 2025-11-03 | start no earlier than 2025-11-05 |  | José |
| 48 | 1.3.2.1.1.1.2 | Implementar RFS10 | 1d | 2025-11-06 | 2025-11-06 | 47 | 100% | 2025-11-03 | 2025-11-03 |  |  | José |
| 49 | 1.3.2.1.1.1.3 | Implementar RFS11 | 1d | 2025-11-07 | 2025-11-07 | 48 | 100% | 2025-11-04 | 2025-11-04 |  |  | José |
| 50 | 1.3.2.1.1.1.4 | Implementar RFS12 | 1d | 2025-11-10 | 2025-11-10 | 49 | 100% | 2025-11-04 | 2025-11-04 | start no earlier than 2025-11-08 |  | José |
| 51 | 1.3.2.1.1.2 | **Teste RFC03** | 3.6d | 2025-11-07 | 2025-11-11 |  | 100% | 2025-11-04 | 2025-11-05 |  |  |  |
| 52 | 1.3.2.1.1.2.1 | Testar RFC03 | 3.6d | 2025-11-07 | 2025-11-11 | 46SS | 100% | 2025-11-04 | 2025-11-05 | start no earlier than 2025-11-07 |  | Luara |
| 53 | 1.3.2.1.2 | **RFC04 (Manter Histórico de Saúde)** | 6.8d | 2025-11-05 | 2025-11-11 |  | 100% | 2025-11-03 | 2025-11-07 |  |  |  |
| 54 | 1.3.2.1.2.1 | **Implementar RFC04** | 4.6d | 2025-11-05 | 2025-11-10 |  | 100% | 2025-11-03 | 2025-11-05 |  |  |  |
| 55 | 1.3.2.1.2.1.1 | Implementar RFS13 | 1d | 2025-11-05 | 2025-11-06 | 25 | 100% | 2025-11-03 | 2025-11-03 | start no earlier than 2025-11-05 |  | Pedro |
| 56 | 1.3.2.1.2.1.2 | Implementar RFS14 | 1d | 2025-11-06 | 2025-11-06 | 55 | 100% | 2025-11-04 | 2025-11-04 |  |  | Pedro |
| 57 | 1.3.2.1.2.1.3 | Implementar RFS15 | 1d | 2025-11-07 | 2025-11-07 | 56 | 100% | 2025-11-04 | 2025-11-05 |  |  | Pedro |
| 58 | 1.3.2.1.2.1.4 | Implementar RFS16 | 1d | 2025-11-10 | 2025-11-10 | 57 | 100% | 2025-11-05 | 2025-11-05 | start no earlier than 2025-11-08 |  | Pedro |

| ID | WBS | Task | Duration | Start | Finish | Predecessors | Complete | Baseline start | Baseline finish | Constraint | Deadline | Resources |
| --- | --- | --- | --- | --- | --- | --- | --- | --- | --- | --- | --- | --- |
| 59 | 1.3.2.1.2.2 | **Teste RFC04** | 3.6d | 2025-11-07 | 2025-11-11 |  | 100% | 2025-11-04 | 2025-11-07 |  |  |  |
| 60 | 1.3.2.1.2.2.1 | Testar RFC04 | 3.6d | 2025-11-07 | 2025-11-11 | 54SS | 100% | 2025-11-04 | 2025-11-07 | start no earlier than 2025-11-07 |  | Laviny |
| 61 | 1.3.3 | **Release 3** | 5.6d | 2025-11-12 | 2025-11-17 |  | 100% | 2025-11-04 | 2025-11-06 | start no earlier than 2025-11-11 |  |  |
| 62 | 1.3.3.1 | **Implementação e Teste** | 5.6d | 2025-11-12 | 2025-11-17 |  | 100% | 2025-11-04 | 2025-11-05 |  |  |  |
| 63 | 1.3.3.1.1 | **RFC06 (Manter Controle Financeiro)** | 5.6d | 2025-11-12 | 2025-11-17 | 50 | 100% | 2025-11-04 | 2025-11-04 | start no earlier than 2025-11-12 |  |  |
| 64 | 1.3.3.1.1.1 | **Implementar RFC06** | 5.4d | 2025-11-12 | 2025-11-17 |  | 100% | 2025-11-04 | 2025-11-05 | start no earlier than 2025-11-12 |  |  |
| 65 | 1.3.3.1.1.1.1 | Implementar RFS18 | 1d | 2025-11-12 | 2025-11-12 | 43 | 100% | 2025-11-05 | 2025-11-05 | start no earlier than 2025-11-12 |  | José |
| 66 | 1.3.3.1.1.1.2 | Implementar RFS19 | 1d | 2025-11-13 | 2025-11-13 | 65 | 100% | 2025-11-04 | 2025-11-06 | start no earlier than 2025-11-13 |  | José |
| 67 | 1.3.3.1.1.1.3 | Implementar RFS20 | 1d | 2025-11-14 | 2025-11-14 | 66 | 100% | 2025-11-04 | 2025-11-06 | start no earlier than 2025-11-14 |  | José |
| 68 | 1.3.3.1.1.1.4 | Implementar RFS17 | 1d | 2025-11-17 | 2025-11-17 | 67 | 100% | 2025-11-05 | 2025-11-05 | start no earlier than 2025-11-15 |  | José |
| 69 | 1.3.3.1.1.2 | **TesteRFC06** | 4d | 2025-11-13 | 2025-11-17 |  | 100% | 2025-11-07 | 2025-11-10 | start no earlier than 2025-11-13 | 2025-11-19 |  |
| 70 | 1.3.3.1.1.2.1 | Testar RFC06 | 4d | 2025-11-13 | 2025-11-17 | 64SS | 100% | 2025-11-07 | 2025-11-10 | start no earlier than 2025-11-12 |  | Luara |
| 71 | 1.3.3.1.2 | **RFC07 (Relatório de Saúde)** | 3d | 2025-11-13 | 2025-11-17 |  | 100% | 2025-11-07 | 2025-11-10 | start no earlier than 2025-11-13 |  |  |
| 72 | 1.3.3.1.2.1 | **Implementar RFC07** | 2d | 2025-11-13 | 2025-11-14 |  | 100% | 2025-11-07 | 2025-11-10 |  |  |  |
| 73 | 1.3.3.1.2.1.1 | Implementar Relatório de Saúde | 2d | 2025-11-13 | 2025-11-14 | 43 | 100% | 2025-11-07 | 2025-11-10 |  |  | Pedro |
| 74 | 1.3.3.1.2.2 | **Teste RFC07** | 3d | 2025-11-13 | 2025-11-17 |  | 100% | 2025-11-07 | 2025-11-10 |  |  |  |
| 75 | 1.3.3.1.2.2.1 | Testar Relatório de Saúde | 3d | 2025-11-13 | 2025-11-17 | 73SS | 100% | 2025-11-07 | 2025-11-10 |  |  | Igor |
| 76 | 1.3.4 | **Release 4** | 8.8d? | 2025-11-17 | 2025-11-25 |  | 100% | 2025-11-17 | 2025-11-19 | start no earlier than 2025-11-17 | 2025-11-26 |  |
| 77 | 1.3.4.1 | **Implementação e teste** | 8.8d? | 2025-11-17 | 2025-11-25 |  | 100% | 2025-11-17 | 2025-11-19 |  |  |  |
| 78 | 1.3.4.1.1 | **RFC08 (Relatório de Gastos)** | 2.4d? | 2025-11-17 | 2025-11-19 |  | 100% | 2025-11-17 | 2025-11-19 |  |  |  |
| 79 | 1.3.4.1.1.1 | **Implementar RFC08** | 2.4d | 2025-11-17 | 2025-11-19 |  | 100% | 2025-11-17 | 2025-11-19 |  |  |  |
| 80 | 1.3.4.1.1.1.1 | Implementar Relatório de Gastos | 2.4d | 2025-11-17 | 2025-11-19 | 61 | 100% | 2025-11-17 | 2025-11-19 |  |  | Pedro |
| 81 | 1.3.4.1.1.2 | **Teste RFC08** | 2.4d? | 2025-11-17 | 2025-11-19 |  | 100% | 2025-11-17 | 2025-11-19 |  |  |  |
| 82 | 1.3.4.1.1.2.1 | Testar Relatório de Gastos | 2.4d? | 2025-11-17 | 2025-11-19 | 80SS | 100% | 2025-11-17 | 2025-11-19 |  |  | Luara |

| ID | WBS | Task | Duration | Start | Finish | Predecessors | Complete | Baseline start | Baseline finish | Constraint | Resources |
| --- | --- | --- | --- | --- | --- | --- | --- | --- | --- | --- | --- |
| 83 | 1.3.4.1.2 | **RFC09(Avaliar Serviçoes e Profissionais)** | 5.6d? | 2025-11-19 | 2025-11-25 |  | 100% |  |  |  |  |
| 84 | 1.3.4.1.2.1 | **Implementar RFC09** | 4.4d? | 2025-11-19 | 2025-11-24 |  | 100% |  |  |  |  |
| 85 | 1.3.4.1.2.1.1 | Implementar RFS21 | 1d? | 2025-11-19 | 2025-11-20 | 61 | 100% |  |  | start no earlier than 2025-11-19 | Luara |
| 86 | 1.3.4.1.2.1.2 | Implementar RFS22 | 1d? | 2025-11-20 | 2025-11-21 | 85 | 100% |  |  |  | Luara |
| 87 | 1.3.4.1.2.1.3 | Implementar RFS23 | 1d? | 2025-11-21 | 2025-11-21 | 86 | 100% |  |  |  | Luara |
| 88 | 1.3.4.1.2.1.4 | Implementar RFS24 | 1d? | 2025-11-24 | 2025-11-24 | 87 | 100% |  |  | start no earlier than 2025-11-22 | Luara |
| 89 | 1.3.4.1.2.2 | **Teste RFC09** | 4d? | 2025-11-20 | 2025-11-25 |  | 100% |  |  |  |  |
| 90 | 1.3.4.1.2.2.1 | Testar RFC09 | 4d? | 2025-11-20 | 2025-11-25 | 85SS | 100% |  |  | start no earlier than 2025-11-20 | José |
| 91 | 1.4 | **Monitoramento e Controle** | 2d | 2025-11-26 | 2025-11-27 |  |  | 2025-11-19 | 2025-11-21 |  |  |
| 92 | 1.4.1 | Acompanhar Projeto | 2d | 2025-11-26 | 2025-11-27 | 24 |  | 2025-11-19 | 2025-11-21 | start no earlier than 2025-11-26 | Igor |
| 93 | 1.5 | **Fechamento** | 0.3d | 2025-11-29 | 2025-12-01 |  |  | 2025-11-19 | 2025-11-19 |  |  |
| 94 | 1.5.1 | Fechamento | 0.3d | 2025-11-29 | 2025-12-01 | 91 |  | 2025-11-19 | 2025-11-19 | start no earlier than 2025-11-29 | Laviny; Luara |
| 95 | 1.6 | **Controle de Mudanças** | 2d | 2025-12-01 | 2025-12-02 |  |  | 2025-11-19 | 2025-11-26 |  |  |
| 96 | 1.6.1 | Controle de Mudanças | 2d | 2025-12-01 | 2025-12-02 | 93 |  | 2025-11-19 | 2025-11-26 |  | José |
